# National Health Campaign

Schedule from MS Project, 2024-02-29 to 2024-05-07, costs in €, A marks actual dates.
Research Programme
ABC Research Ltd.

## Calendars

- Standard: Mon-Fri 08:00-12:00, 13:00-17:00; Sat-Sun off.

## Resources

| Resource | Group | Rate |
| --- | --- | --- |
| Joanne Kelly | Management | 19.23 |
| Riona Carr | Executive | 6.25 |
| Mary Breen | Management | 19.23 |
| Tom Joyce | Office Staff | 6.88 |
| Conf Room | Facilities |  |
| Junior Staff | Office Staff | 3.75 |
| Printing | External |  |

## Schedule

| ID | WBS | Task | Type | Duration | Start | Finish | Predecessors | Complete | Remaining | Baseline start | Baseline finish | Baseline duration | Total slack | Resources | Work | Actual work | Cost | Baseline cost | Actual cost |
| --- | --- | --- | --- | --- | --- | --- | --- | --- | --- | --- | --- | --- | --- | --- | --- | --- | --- | --- | --- |
| 1 | 1 | **National Health Campaign** |  | 11d | 2024-02-29 A | 2024-03-15 |  | 33% | 7.33d | 2024-02-29 | 2024-03-15 | 11d | 0d |  | 96h | 32h | 517.69 | 487.69 | 367.69 |
| 2 | 1.1 | **Planning** |  | 2d | 2024-02-29 A | 2024-03-01 A |  | 100% |  | 2024-02-29 | 2024-03-01 | 2d |  |  | 16h | 16h | 307.69 | 307.69 | 307.69 |
| 3 | 1.1.1 | Design questionnaire | manual | 2d | 2024-02-29 A | 2024-03-01 A |  | 100% |  | 2024-02-29 | 2024-03-01 | 2d |  | Joanne Kelly | 16h | 16h | 307.69 | 307.69 | 307.69 |
| 4 | 1.2 | Type questionnnaire | manual | 2d | 2024-03-04 A | 2024-03-05 A |  | 100% |  | 2024-03-04 | 2024-03-04 | 1d |  | Junior Staff | 16h | 16h | 60 | 30 | 60 |
| 5 | 1.3 | Print questionnnaire | manual | 1w | 2024-03-05 | 2024-03-11 |  |  |  | 2024-03-05 | 2024-03-11 | 1w |  | Printing | 40h |  |  |  |  |
| 6 | 1.4 | Invite interviewers to briefing meeeting | manual | 3d | 2024-03-12 | 2024-03-14 |  |  |  | 2024-03-12 | 2024-03-14 | 3d |  | Riona Carr | 24h |  | 150 | 150 |  |
| 7 | 1.5 | Survey planning complete | milestone, manual | 0d | 2024-03-15 | 2024-03-15 |  |  |  | 2024-03-15 | 2024-03-15 | 0d |  |  |  |  |  |  |  |
| 8 | 2 | **Briefing Setup** |  | 12.5d | 2024-03-15 | 2024-04-02 |  |  |  | 2024-03-15 | 2024-04-02 | 12.5d | 0d |  | 124h |  | 597.5 | 597.5 |  |
| 9 | 2.1 | Book conference room for briefing meeting | manual | 4h | 2024-03-15 | 2024-03-15 | 7, 5 |  |  | 2024-03-15 | 2024-03-15 | 4h |  | Tom Joyce | 4h |  | 27.5 | 27.5 |  |
| 10 | 2.2 | Contact interviewing locations | manual | 2d | 2024-03-15 | 2024-03-18 | 9SS |  |  | 2024-03-15 | 2024-03-18 | 2d |  | Tom Joyce | 16h |  | 110 | 110 |  |
| 11 | 2.3 | Prepare rosters | manual | 4d | 2024-03-19 | 2024-03-25 | 10 |  |  | 2024-03-19 | 2024-03-25 | 4d |  | Tom Joyce | 32h |  | 220 | 220 |  |
| 12 | 2.4 | Prepare packs for each interviewer | manual | 3d | 2024-03-25 | 2024-03-28 | 11 |  |  | 2024-03-25 | 2024-03-28 | 3d |  | Junior Staff | 24h |  | 90 | 90 |  |
| 13 | 2.5 | Briefing meeting with interviewers | manual | 3d | 2024-03-28 | 2024-04-02 | 12 |  |  | 2024-03-28 | 2024-04-02 | 3d |  | Conf Room; Riona Carr | 48h |  | 150 | 150 |  |
| 14 | 2.6 | Interviewers briefing complete | milestone, manual | 0d | 2024-04-02 | 2024-04-02 | 13 |  |  | 2024-04-02 | 2024-04-02 | 0d |  |  |  |  |  |  |  |
| 15 | 3 | **Data processing** |  | 16.5d | 2024-04-02 | 2024-04-25 |  |  |  | 2024-04-02 | 2024-04-25 | 16.5d | 0d |  | 148h |  | 892.69 | 892.69 |  |
| 16 | 3.1 | Prepare book-in forms | manual | 2d | 2024-04-02 | 2024-04-04 | 14 |  |  | 2024-04-02 | 2024-04-04 | 2d |  | Riona Carr | 16h |  | 100 | 100 |  |
| 17 | 3.2 | Check questionnaires | manual | 2d | 2024-04-04 | 2024-04-08 | 16 |  |  | 2024-04-04 | 2024-04-08 | 2d |  | Junior Staff | 16h |  | 60 | 60 |  |
| 18 | 3.3 | Code questionnaires | manual | 1.5w | 2024-04-08 | 2024-04-17 | 17 |  |  | 2024-04-08 | 2024-04-17 | 1.5w |  | Junior Staff | 60h |  | 225 | 225 |  |
| 19 | 3.4 | Input data in computer | manual | 3d | 2024-04-15 | 2024-04-17 | 18FS-3d |  |  | 2024-04-15 | 2024-04-17 | 3d |  | Junior Staff | 24h |  | 90 | 90 |  |
| 20 | 3.5 | Analyse the data | manual | 2d | 2024-04-23 | 2024-04-24 | 19 |  |  | 2024-04-23 | 2024-04-24 | 2d |  | Joanne Kelly; Tom Joyce | 32h |  | 417.69 | 417.69 |  |
| 21 | 3.6 | Data processing complete | milestone, manual | 0d | 2024-04-25 | 2024-04-25 | 20 |  |  | 2024-04-25 | 2024-04-25 | 0d |  |  |  |  |  |  |  |
| 22 | 4 | **Interpretation** |  | 8d | 2024-04-25 | 2024-05-07 |  |  |  | 2024-04-25 | 2024-05-07 | 8d | 0d |  | 128h |  | 2,461.54 | 2,461.54 |  |
| 23 | 4.1 | Prepare presentation | manual | 3d | 2024-04-25 | 2024-04-29 | 21 |  |  | 2024-04-25 | 2024-04-29 | 3d |  | Mary Breen; Joanne Kelly | 48h |  | 923.08 | 923.08 |  |
| 24 | 4.2 | Prepare research report | manual | 1w | 2024-04-30 | 2024-05-06 | 23 |  |  | 2024-04-30 | 2024-05-06 | 1w |  | Mary Breen; Joanne Kelly | 80h |  | 1,538.46 | 1,538.46 |  |
| 25 | 4.3 | Project complete | milestone, manual | 0d | 2024-05-07 | 2024-05-07 | 24 |  |  | 2024-05-07 | 2024-05-07 | 0d |  |  |  |  |  |  |  |
